# 调研阶段

How a schedule from a web Gantt chart changed from version to version. A marks actual dates.

## Version 1 (saved 2025-08-10)

| ID | Task | Duration | Start | Finish |
| --- | --- | --- | --- | --- |
| 2 | 调研工作启动会 | 1d | 2025-08-11 | 2025-08-11 |

## Version 2 (saved 2025-08-10)

Last finish stays 2025-08-11.

Added:

| ID | Task | Duration | Start | Finish |
| --- | --- | --- | --- | --- |
| 3 | IDC网络环境调研 | 1d | 2025-08-11 | 2025-08-11 |
| 4 | 工厂网络环境调研 | 1d | 2025-08-11 | 2025-08-11 |
| 5 | 调研资料整理 | 1d | 2025-08-11 | 2025-08-11 |
| 6 | 调研工作确认会 | 1d | 2025-08-11 | 2025-08-11 |
| 7 | 方案设计阶段 | 1d | 2025-08-11 | 2025-08-11 |

## Version 3 (saved 2025-08-20)

Last finish 2025-08-11 → 2025-09-22 (+42d).

Added:

| ID | Task | Duration | Start | Finish | Predecessors |
| --- | --- | --- | --- | --- | --- |
| 2 | **调研阶段** | 4d | 2025-08-18 | 2025-08-21 |  |
| 9 | 方案设计工作启动会 | 1d | 2025-08-22 | 2025-08-22 |  |
| 10 | IDC防火墙网络优化设计 | 1d | 2025-08-22 | 2025-08-22 |  |
| 11 | 安全策略标准制定 | 1d | 2025-08-25 | 2025-08-25 | 10 |
| 12 | IDC安全策略优化设计 | 1d | 2025-08-26 | 2025-08-26 | 11 |
| 13 | 工厂/办公室防火墙安全策略优化设计 | 1d | 2025-08-27 | 2025-08-27 | 12 |
| 14 | 方案设计工作确认会 | 1d | 2025-08-28 | 2025-08-28 | 13 |
| 15 | **项目设计阶段** | 17d | 2025-08-29 | 2025-09-14 |  |
| 16 | 项目设计启动会 | 1d | 2025-08-29 | 2025-08-29 |  |
| 17 | SDC上海防火墙clish脚本配置设计与测试 | 1d | 2025-08-29 | 2025-08-29 |  |
| 18 | CHC上海来福士中心防火墙脚本配置设计与测试 | 1d | 2025-09-01 | 2025-09-01 | 17 |
| 19 | ABAC上海前滩办公室防火墙脚本配置设计与测试 | 1d | 2025-09-02 | 2025-09-02 | 18 |
| 20 | ABAC江苏贸易公司（新如东）防火墙脚本配置设计与测试 | 1d | 2025-09-03 | 2025-09-03 | 19 |
| 21 | ABAC如东工厂防火墙脚本配置设计与测试 | 1d | 2025-09-04 | 2025-09-04 | 20 |
| 22 | ABAC陕西工厂防火墙脚本配置设计与测试 | 1d | 2025-09-05 | 2025-09-05 | 21 |
| 23 | ABAC新乡工厂防火墙脚本配置设计与测试 | 1d | 2025-09-08 | 2025-09-08 | 22 |
| 24 | ABAC天津工厂防火墙脚本配置设计与测试 | 1d | 2025-09-09 | 2025-09-09 | 23 |
| 25 | ABMC烟台工厂防火墙脚本配置设计与测试 | 1d | 2025-09-10 | 2025-09-10 | 24 |
| 26 | ABAC安徽工厂防火墙脚本配置设计与测试 | 1d | 2025-09-11 | 2025-09-11 | 25 |
| 27 | ABAC驻马店工厂防火墙脚本配置设计与测试 | 1d | 2025-09-12 | 2025-09-12 | 26 |
| 28 | ABAC鞍山工厂防火墙脚本配置设计与测试 | 1d | 2025-09-15 | 2025-09-15 | 27 |
| 29 | ABAC江西工厂防火墙脚本配置设计与测试 | 1d | 2025-09-16 | 2025-09-16 | 28 |
| 30 | ABAC哈尔滨办公室防火墙脚本配置设计与测试 | 1d | 2025-09-17 | 2025-09-17 | 29 |
| 31 | ABAC哈尔滨工厂防火墙脚本配置设计与测试 | 1d | 2025-09-18 | 2025-09-18 | 30 |
| 32 | ABSC哈尔滨办公室防火墙脚本配置设计与测试 | 1d | 2025-09-19 | 2025-09-19 | 31 |
| 33 | 项目设计工作确认会 | 1d | 2025-09-22 | 2025-09-22 | 32 |
| 34 | **项目交付阶段** | 22d | 2025-08-15 | 2025-09-05 |  |
| 35 | 项目交付阶段启动会 | 1d | 2025-09-03 | 2025-09-03 | 19 |
| 36 | SMS服务器安装调试（远程） | 1d | 2025-08-15 | 2025-08-15 |  |
| 37 | **SDC上海防火墙设备上架入网调试（现场）** | 3d | 2025-09-03 | 2025-09-05 |  |
| 38 | 设备配置+割接 | 3d | 2025-09-03 | 2025-09-05 | 19 |
| 39 | 网络保障+差旅 | 1d | 2025-09-04 | 2025-09-04 | 20 |
| 40 | CHC上海来福士中心防火墙替换（现场） | 1d | 2025-08-18 | 2025-08-18 |  |

Changed:

| ID | Task | Start | Finish | Duration | Predecessors |
| --- | --- | --- | --- | --- | --- |
| 3 | 调研工作启动会 | 2025-08-11 → 2025-08-18 (+7d) | 2025-08-11 → 2025-08-18 (+7d) |  |  |
| 4 | IDC网络环境调研 | 2025-08-11 → 2025-08-18 (+7d) | 2025-08-11 → 2025-08-18 (+7d) |  |  |
| 5 | 工厂网络环境调研 | 2025-08-11 → 2025-08-19 (+8d) | 2025-08-11 → 2025-08-19 (+8d) |  | none → 4 |
| 6 | 调研资料整理 | 2025-08-11 → 2025-08-20 (+9d) | 2025-08-11 → 2025-08-20 (+9d) |  | none → 5 |
| 7 | 调研工作确认会 | 2025-08-11 → 2025-08-21 (+10d) | 2025-08-11 → 2025-08-21 (+10d) |  | none → 6 |
| 8 | **方案设计阶段** | 2025-08-11 → 2025-08-22 (+11d) | 2025-08-11 → 2025-08-26 (+15d) | 1d → 5d |  |

## Version 4 (saved 2025-08-21)

Last finish 2025-09-22 → 2025-11-01 (+40d).

Added:

| ID | Task | Duration | Start | Finish | Predecessors |
| --- | --- | --- | --- | --- | --- |
| 36 | SMS服务器安装+调试（远程） | 1d | 2025-08-15 | 2025-08-15 |  |
| 38 | 差旅 | 1d | 2025-09-11 | 2025-09-11 | 19 |
| 40 | 网络保障 | 1d | 2025-09-15 | 2025-09-15 | 39 |
| 42 | 设备配置+割接 | 1d | 2025-09-16 | 2025-09-16 | 40 |
| 43 | 网络保障 | 1d | 2025-09-17 | 2025-09-17 | 42 |
| 44 | **ABAC上海前滩办公室防火墙替换（现场）** | 3d | 2025-09-18 | 2025-09-20 |  |
| 45 | 设备配置+割接 | 1d | 2025-09-18 | 2025-09-18 | 43 |
| 46 | 网络保障 | 1d | 2025-09-19 | 2025-09-19 | 45 |
| 47 | 差旅 | 1d | 2025-09-20 | 2025-09-20 | 46 |
| 48 | **ABAC江苏贸易公司（新如东）防火墙替换（远程）** | 2d | 2025-09-21 | 2025-09-22 |  |
| 49 | 设备配置+割接 | 1d | 2025-09-21 | 2025-09-21 | 47 |
| 50 | 网络保障 | 1d | 2025-09-22 | 2025-09-22 | 49 |
| 51 | **ABAC如东工厂防火墙替换（远程）** | 2d | 2025-09-23 | 2025-09-24 |  |
| 52 | 设备配置+割接 | 1d | 2025-09-23 | 2025-09-23 | 50 |
| 53 | 网络保障 | 1d | 2025-09-24 | 2025-09-24 | 52 |
| 54 | **ABSC哈尔滨办公室防火墙替换（远程）** | 2d | 2025-09-25 | 2025-09-26 |  |
| 55 | 设备配置+割接 | 1d | 2025-09-25 | 2025-09-25 | 53 |
| 56 | 网络保障 | 1d | 2025-09-26 | 2025-09-26 | 55 |
| 57 | **ABMC烟台工厂防火墙替换（远程）** | 2d | 2025-09-27 | 2025-09-28 |  |
| 58 | 设备配置+割接 | 1d | 2025-09-27 | 2025-09-27 | 56 |
| 59 | 网络保障 | 1d | 2025-09-28 | 2025-09-28 | 58 |
| 60 | **ABAC江西工厂防火墙替换（现场）** | 3d | 2025-09-29 | 2025-10-01 |  |
| 61 | 差旅 | 1d | 2025-09-29 | 2025-09-29 | 59 |
| 62 | 设备配置+割接 | 1d | 2025-09-30 | 2025-09-30 | 61 |
| 63 | 网络保障 | 1d | 2025-10-01 | 2025-10-01 | 62 |
| 64 | **ABAC安徽工厂防火墙替换（现场）** | 3d | 2025-10-02 | 2025-10-04 |  |
| 65 | 差旅 | 1d | 2025-10-02 | 2025-10-02 | 63 |
| 66 | 设备配置+割接 | 1d | 2025-10-03 | 2025-10-03 | 65 |
| 67 | 网络保障 | 1d | 2025-10-04 | 2025-10-04 | 66 |
| 68 | **ABAC驻马店工厂防火墙替换（现场）** | 3d | 2025-10-05 | 2025-10-07 |  |
| 69 | 差旅 | 1d | 2025-10-05 | 2025-10-05 | 67 |
| 70 | 设备配置+割接 | 1d | 2025-10-06 | 2025-10-06 | 69 |
| 71 | 网络保障 | 1d | 2025-10-07 | 2025-10-07 | 70 |
| 72 | **ABAC新乡工厂防火墙替换（现场）** | 3d | 2025-10-08 | 2025-10-10 |  |
| 73 | 差旅 | 1d | 2025-10-08 | 2025-10-08 | 71 |
| 74 | 设备配置+割接 | 1d | 2025-10-09 | 2025-10-09 | 73 |
| 75 | 网络保障 | 1d | 2025-10-10 | 2025-10-10 | 74 |
| 76 | **ABAC陕西工厂防火墙替换（现场）** | 3d | 2025-10-11 | 2025-10-13 |  |
| 77 | 差旅 | 1d | 2025-10-11 | 2025-10-11 | 75 |
| 78 | 设备配置+割接 | 1d | 2025-10-12 | 2025-10-12 | 77 |
| 79 | 网络保障 | 1d | 2025-10-13 | 2025-10-13 | 78 |
| 80 | **ABAC天津工厂防火墙替换（现场）** | 4d | 2025-10-14 | 2025-10-17 |  |
| 81 | 差旅 | 1d | 2025-10-14 | 2025-10-14 | 79 |
| 82 | 设备配置+割接 | 1d | 2025-10-15 | 2025-10-15 | 81 |
| 83 | SDWAN优化动作 | 1d | 2025-10-16 | 2025-10-16 | 82 |
| 84 | 网络保障 | 1d | 2025-10-17 | 2025-10-17 | 83 |
| 85 | **ABAC鞍山工厂防火墙替换（现场）** | 4d | 2025-10-18 | 2025-10-21 |  |
| 86 | 差旅 | 1d | 2025-10-18 | 2025-10-18 | 84 |
| 87 | 设备配置+割接 | 1d | 2025-10-19 | 2025-10-19 | 86 |
| 88 | SDWAN优化动作 | 1d | 2025-10-20 | 2025-10-20 | 87 |
| 89 | 网络保障 | 1d | 2025-10-21 | 2025-10-21 | 88 |
| 90 | **ABAC哈尔滨办公室防火墙替换（现场）** | 3d | 2025-10-22 | 2025-10-24 |  |
| 91 | 差旅 | 1d | 2025-10-22 | 2025-10-22 | 89 |
| 92 | 设备配置+割接 | 1d | 2025-10-23 | 2025-10-23 | 91 |
| 93 | 网络保障 | 1d | 2025-10-24 | 2025-10-24 | 92 |
| 94 | **ABAC哈尔滨工厂防火墙替换（现场）** | 4d | 2025-10-25 | 2025-10-28 |  |
| 95 | 差旅 | 1d | 2025-10-25 | 2025-10-25 | 93 |
| 96 | 设备配置+割接 | 1d | 2025-10-26 | 2025-10-26 | 95 |
| 97 | SDWAN优化动作 | 1d | 2025-10-27 | 2025-10-27 | 96 |
| 98 | 网络保障 | 1d | 2025-10-28 | 2025-10-28 | 97 |
| 99 | 项目交付阶段总结会 | 1d | 2025-10-29 | 2025-10-29 | 98 |
| 100 | **项目验收阶段** | 3d | 2025-10-30 | 2025-11-01 |  |
| 101 | 项目验收工作启动会 | 1d | 2025-10-30 | 2025-10-30 | 99 |
| 102 | 项目验收文档整理 | 1d | 2025-10-31 | 2025-10-31 | 101 |
| 103 | 项目验收 | 1d | 2025-11-01 | 2025-11-01 | 102 |

Removed: 36 SMS服务器安装调试（远程）; 39 网络保障+差旅

Changed:

| ID | Task | Start | Finish | Duration | Predecessors |
| --- | --- | --- | --- | --- | --- |
| 8 | **方案设计阶段** |  | 2025-08-26 → 2025-09-03 (+8d) | 5d → 13d |  |
| 10 | IDC防火墙网络优化设计 |  | 2025-08-22 → 2025-08-24 (+2d) | 1d → 3d |  |
| 11 | 安全策略标准制定 |  | 2025-08-25 → 2025-08-27 (+2d) | 1d → 3d |  |
| 12 | IDC安全策略优化设计 | 2025-08-26 → 2025-08-28 (+2d) | 2025-08-26 → 2025-08-30 (+4d) | 1d → 3d |  |
| 13 | 工厂/办公室防火墙安全策略优化设计 | 2025-08-27 → 2025-08-31 (+4d) | 2025-08-27 → 2025-09-02 (+6d) | 1d → 3d |  |
| 14 | 方案设计工作确认会 | 2025-08-28 → 2025-09-03 (+6d) | 2025-08-28 → 2025-09-03 (+6d) |  |  |
| 15 | **项目设计阶段** | 2025-08-29 → 2025-09-04 (+6d) | 2025-09-14 → 2025-09-24 (+10d) | 17d → 21d |  |
| 16 | 项目设计启动会 | 2025-08-29 → 2025-09-04 (+6d) | 2025-08-29 → 2025-09-04 (+6d) |  | none → 14 |
| 17 | SDC上海防火墙clish脚本配置设计与测试 | 2025-08-29 → 2025-09-05 (+7d) | 2025-08-29 → 2025-09-06 (+8d) | 1d → 2d | none → 16 |
| 18 | CHC上海来福士中心防火墙脚本配置设计与测试 | 2025-09-01 → 2025-09-07 (+6d) | 2025-09-01 → 2025-09-08 (+7d) | 1d → 2d |  |
| 19 | ABAC上海前滩办公室防火墙脚本配置设计与测试 | 2025-09-02 → 2025-09-09 (+7d) | 2025-09-02 → 2025-09-10 (+8d) | 1d → 2d |  |
| 20 | ABAC江苏贸易公司（新如东）防火墙脚本配置设计与测试 | 2025-09-03 → 2025-09-11 (+8d) | 2025-09-03 → 2025-09-11 (+8d) |  |  |
| 21 | ABAC如东工厂防火墙脚本配置设计与测试 | 2025-09-04 → 2025-09-12 (+8d) | 2025-09-04 → 2025-09-12 (+8d) |  |  |
| 22 | ABSC哈尔滨办公室防火墙脚本配置设计与测试 | 2025-09-19 → 2025-09-13 (-6d) | 2025-09-19 → 2025-09-13 (-6d) |  | 32 → 21 |
| 23 | ABMC烟台工厂防火墙脚本配置设计与测试 | 2025-09-10 → 2025-09-14 (+4d) | 2025-09-10 → 2025-09-14 (+4d) |  | 29 → 22 |
| 24 | ABAC江西工厂防火墙脚本配置设计与测试 | 2025-09-16 → 2025-09-15 (-1d) | 2025-09-16 → 2025-09-15 (-1d) |  | 30 → 23 |
| 25 | ABAC安徽工厂防火墙脚本配置设计与测试 | 2025-09-11 → 2025-09-16 (+5d) | 2025-09-11 → 2025-09-16 (+5d) |  | 23 → 24 |
| 26 | ABAC驻马店工厂防火墙脚本配置设计与测试 | 2025-09-12 → 2025-09-17 (+5d) | 2025-09-12 → 2025-09-17 (+5d) |  |  |
| 27 | ABAC新乡工厂防火墙脚本配置设计与测试 | 2025-09-08 → 2025-09-18 (+10d) | 2025-09-08 → 2025-09-18 (+10d) |  | 28 → 26 |
| 28 | ABAC陕西工厂防火墙脚本配置设计与测试 | 2025-09-05 → 2025-09-19 (+14d) | 2025-09-05 → 2025-09-19 (+14d) |  | 21 → 27 |
| 29 | ABAC天津工厂防火墙脚本配置设计与测试 | 2025-09-09 → 2025-09-20 (+11d) | 2025-09-09 → 2025-09-20 (+11d) |  | 27 → 28 |
| 30 | ABAC鞍山工厂防火墙脚本配置设计与测试 | 2025-09-15 → 2025-09-21 (+6d) | 2025-09-15 → 2025-09-21 (+6d) |  | 26 → 29 |
| 31 | ABAC哈尔滨办公室防火墙脚本配置设计与测试 | 2025-09-17 → 2025-09-22 (+5d) | 2025-09-17 → 2025-09-22 (+5d) |  | 24 → 30 |
| 32 | ABAC哈尔滨工厂防火墙脚本配置设计与测试 | 2025-09-18 → 2025-09-23 (+5d) | 2025-09-18 → 2025-09-23 (+5d) |  |  |
| 33 | 项目设计工作确认会 | 2025-09-22 → 2025-09-24 (+2d) | 2025-09-22 → 2025-09-24 (+2d) |  | 22 → 32 |
| 34 | **项目交付阶段** |  | 2025-09-05 → 2025-10-29 (+54d) | 22d → 76d |  |
| 35 | 项目交付阶段启动会 | 2025-09-03 → 2025-09-11 (+8d) | 2025-09-03 → 2025-09-11 (+8d) |  |  |
| 37 | **SDC上海防火墙设备上架入网调试（现场）** | 2025-09-03 → 2025-09-11 (+8d) | 2025-09-05 → 2025-09-15 (+10d) | 3d → 5d |  |
| 39 | 设备配置+割接 | 2025-09-03 → 2025-09-12 (+9d) | 2025-09-05 → 2025-09-14 (+9d) |  | 19 → 38 |
| 41 | **CHC上海来福士中心防火墙替换（现场）** | 2025-08-18 → 2025-09-16 (+29d) | 2025-08-18 → 2025-09-17 (+30d) | 1d → 2d |  |

## Version 5 (saved 2025-08-29)

Last finish 2025-11-01 → 2025-11-11 (+10d).

Changed:

| ID | Task | Start | Finish |
| --- | --- | --- | --- |
| 8 | **方案设计阶段** |  | 2025-09-03 → 2025-09-05 (+2d) |
| 10 | IDC防火墙网络优化设计 |  | 2025-08-24 → 2025-08-25 (+1d) |
| 13 | 工厂/办公室防火墙安全策略优化设计 | 2025-08-31 → 2025-09-01 (+1d) | 2025-09-02 → 2025-09-03 (+1d) |
| 15 | **项目设计阶段** |  | 2025-09-24 → 2025-09-27 (+3d) |
| 18 | CHC上海来福士中心防火墙脚本配置设计与测试 | 2025-09-07 → 2025-09-08 (+1d) | 2025-09-08 → 2025-09-09 (+1d) |
| 23 | ABMC烟台工厂防火墙脚本配置设计与测试 | 2025-09-14 → 2025-09-15 (+1d) | 2025-09-14 → 2025-09-15 (+1d) |
| 30 | ABAC鞍山工厂防火墙脚本配置设计与测试 | 2025-09-21 → 2025-09-22 (+1d) | 2025-09-21 → 2025-09-22 (+1d) |
| 34 | **项目交付阶段** |  | 2025-10-29 → 2025-11-11 (+13d) |
| 37 | **SDC上海防火墙设备上架入网调试（现场）** |  | 2025-09-15 → 2025-09-16 (+1d) |
| 39 | 设备配置+割接 |  | 2025-09-14 → 2025-09-15 (+1d) |
| 48 | **ABAC江苏贸易公司（新如东）防火墙替换（远程）** | 2025-09-21 → 2025-09-22 (+1d) | 2025-09-22 → 2025-09-23 (+1d) |
| 49 | 设备配置+割接 | 2025-09-21 → 2025-09-22 (+1d) | 2025-09-21 → 2025-09-22 (+1d) |
| 57 | **ABMC烟台工厂防火墙替换（远程）** |  | 2025-09-28 → 2025-09-29 (+1d) |
| 59 | 网络保障 | 2025-09-28 → 2025-09-29 (+1d) | 2025-09-28 → 2025-09-29 (+1d) |
| 68 | **ABAC驻马店工厂防火墙替换（现场）** | 2025-10-05 → 2025-10-06 (+1d) | 2025-10-07 → 2025-10-08 (+1d) |
| 69 | 差旅 | 2025-10-05 → 2025-10-06 (+1d) | 2025-10-05 → 2025-10-06 (+1d) |
| 76 | **ABAC陕西工厂防火墙替换（现场）** |  | 2025-10-13 → 2025-10-14 (+1d) |
| 78 | 设备配置+割接 | 2025-10-12 → 2025-10-13 (+1d) | 2025-10-12 → 2025-10-13 (+1d) |
| 85 | **ABAC鞍山工厂防火墙替换（现场）** |  | 2025-10-21 → 2025-10-22 (+1d) |
| 87 | 设备配置+割接 | 2025-10-19 → 2025-10-20 (+1d) | 2025-10-19 → 2025-10-20 (+1d) |
| 94 | **ABAC哈尔滨工厂防火墙替换（现场）** |  | 2025-10-28 → 2025-10-29 (+1d) |
| 96 | 设备配置+割接 | 2025-10-26 → 2025-10-27 (+1d) | 2025-10-26 → 2025-10-27 (+1d) |

## Version 6 (saved 2025-09-01)

Last finish 2025-11-11 → 2025-11-01 (-10d).

Changed:

| ID | Task | Finish |
| --- | --- | --- |
| 8 | **方案设计阶段** | 2025-09-05 → 2025-09-03 (-2d) |
| 10 | IDC防火墙网络优化设计 | 2025-08-25 → 2025-08-24 (-1d) |
| 15 | **项目设计阶段** | 2025-09-27 → 2025-09-24 (-3d) |
| 34 | **项目交付阶段** | 2025-11-11 → 2025-10-29 (-13d) |
| 37 | **SDC上海防火墙设备上架入网调试（现场）** | 2025-09-16 → 2025-09-15 (-1d) |
| 39 | 设备配置+割接 | 2025-09-15 → 2025-09-14 (-1d) |
| 57 | **ABMC烟台工厂防火墙替换（远程）** | 2025-09-29 → 2025-09-28 (-1d) |
| 76 | **ABAC陕西工厂防火墙替换（现场）** | 2025-10-14 → 2025-10-13 (-1d) |
| 85 | **ABAC鞍山工厂防火墙替换（现场）** | 2025-10-22 → 2025-10-21 (-1d) |
| 94 | **ABAC哈尔滨工厂防火墙替换（现场）** | 2025-10-29 → 2025-10-28 (-1d) |

## Version 7 (saved 2025-09-03)

Last finish 2025-11-01 → 2025-12-01 (+30d).

Added:

| ID | Task | Duration | Start | Finish | Predecessors |
| --- | --- | --- | --- | --- | --- |
| 13 | 工厂/办公室防火墙割接优化设计（架构+策略） | 14d | 2025-08-28 | 2025-09-10 | 11 |
| 38 | 设备上架+初始化 | 1d | 2025-09-19 | 2025-09-19 | 19 |
| 39 | 设备配置 | 2d | 2025-09-22 | 2025-09-23 | 38 |
| 40 | 配置检查+结果汇报，割接条件判断：是否具备割接条件 | 1d | 2025-09-22 | 2025-09-22 | 39 |
| 41 | 割接前准备：客户下发割接公告，联系相应业务接口人。 | 1d | 2025-09-23 | 2025-09-23 | 40 |
| 42 | 割接前准备：制定割接方案（割接前后的测试方案+割接步骤+回退方案） | 7d | 2025-09-23 | 2025-09-29 | 40 |
| 43 | SDC业务割接 | 2d | 2025-10-09 | 2025-10-10 |  |
| 44 | 割接后复盘会 | 1d | 2025-10-13 | 2025-10-13 | 43 |

Removed: 13 工厂/办公室防火墙安全策略优化设计; 38 差旅; 39 设备配置+割接; 40 网络保障

Changed:

| ID | Task | Start | Finish | Duration | Predecessors |
| --- | --- | --- | --- | --- | --- |
| 8 | **方案设计阶段** |  | 2025-09-03 → 2025-09-11 (+8d) | 13d → 21d |  |
| 12 | IDC安全策略优化设计 |  | 2025-08-30 → 2025-09-10 (+11d) | 3d → 14d |  |
| 14 | 方案设计工作确认会 | 2025-09-03 → 2025-09-11 (+8d) | 2025-09-03 → 2025-09-11 (+8d) |  | 工厂/办公室防火墙安全策略优化设计 → 13 |
| 15 | **项目设计阶段** | 2025-09-04 → 2025-09-12 (+8d) | 2025-09-24 → 2025-10-02 (+8d) |  |  |
| 16 | 项目设计启动会 | 2025-09-04 → 2025-09-12 (+8d) | 2025-09-04 → 2025-09-12 (+8d) |  |  |
| 17 | SDC上海防火墙clish脚本配置设计与测试 | 2025-09-05 → 2025-09-15 (+10d) | 2025-09-06 → 2025-09-16 (+10d) |  |  |
| 18 | CHC上海来福士中心防火墙脚本配置设计与测试 | 2025-09-08 → 2025-09-15 (+7d) | 2025-09-09 → 2025-09-16 (+7d) |  |  |
| 19 | ABAC上海前滩办公室防火墙脚本配置设计与测试 | 2025-09-09 → 2025-09-17 (+8d) | 2025-09-10 → 2025-09-18 (+8d) |  |  |
| 20 | ABAC江苏贸易公司（新如东）防火墙脚本配置设计与测试 | 2025-09-11 → 2025-09-19 (+8d) | 2025-09-11 → 2025-09-19 (+8d) |  |  |
| 21 | ABAC如东工厂防火墙脚本配置设计与测试 | 2025-09-12 → 2025-09-22 (+10d) | 2025-09-12 → 2025-09-22 (+10d) |  |  |
| 22 | ABSC哈尔滨办公室防火墙脚本配置设计与测试 | 2025-09-13 → 2025-09-22 (+9d) | 2025-09-13 → 2025-09-22 (+9d) |  |  |
| 23 | ABMC烟台工厂防火墙脚本配置设计与测试 | 2025-09-15 → 2025-09-22 (+7d) | 2025-09-15 → 2025-09-22 (+7d) |  |  |
| 24 | ABAC江西工厂防火墙脚本配置设计与测试 | 2025-09-15 → 2025-09-23 (+8d) | 2025-09-15 → 2025-09-23 (+8d) |  |  |
| 25 | ABAC安徽工厂防火墙脚本配置设计与测试 | 2025-09-16 → 2025-09-24 (+8d) | 2025-09-16 → 2025-09-24 (+8d) |  |  |
| 26 | ABAC驻马店工厂防火墙脚本配置设计与测试 | 2025-09-17 → 2025-09-25 (+8d) | 2025-09-17 → 2025-09-25 (+8d) |  |  |
| 27 | ABAC新乡工厂防火墙脚本配置设计与测试 | 2025-09-18 → 2025-09-26 (+8d) | 2025-09-18 → 2025-09-26 (+8d) |  |  |
| 28 | ABAC陕西工厂防火墙脚本配置设计与测试 | 2025-09-19 → 2025-09-29 (+10d) | 2025-09-19 → 2025-09-29 (+10d) |  |  |
| 29 | ABAC天津工厂防火墙脚本配置设计与测试 | 2025-09-20 → 2025-09-29 (+9d) | 2025-09-20 → 2025-09-29 (+9d) |  |  |
| 30 | ABAC鞍山工厂防火墙脚本配置设计与测试 | 2025-09-22 → 2025-09-29 (+7d) | 2025-09-22 → 2025-09-29 (+7d) |  |  |
| 31 | ABAC哈尔滨办公室防火墙脚本配置设计与测试 | 2025-09-22 → 2025-09-30 (+8d) | 2025-09-22 → 2025-09-30 (+8d) |  |  |
| 32 | ABAC哈尔滨工厂防火墙脚本配置设计与测试 | 2025-09-23 → 2025-10-01 (+8d) | 2025-09-23 → 2025-10-01 (+8d) |  |  |
| 33 | 项目设计工作确认会 | 2025-09-24 → 2025-10-02 (+8d) | 2025-09-24 → 2025-10-02 (+8d) |  |  |
| 34 | **项目交付阶段** |  | 2025-10-29 → 2025-11-27 (+29d) | 76d → 105d |  |
| 35 | 项目交付阶段启动会 | 2025-09-11 → 2025-09-19 (+8d) | 2025-09-11 → 2025-09-19 (+8d) |  |  |
| 37 | **SDC上海防火墙设备上架入网调试（现场）** | 2025-09-11 → 2025-09-19 (+8d) | 2025-09-15 → 2025-10-11 (+26d) | 5d → 23d |  |
| 45 | **CHC上海来福士中心防火墙替换（现场）** | 2025-09-16 → 2025-10-15 (+29d) | 2025-09-17 → 2025-10-16 (+29d) |  |  |
| 46 | 设备配置+割接 | 2025-09-16 → 2025-10-15 (+29d) | 2025-09-16 → 2025-10-15 (+29d) |  | 网络保障 → none |
| 47 | 网络保障 | 2025-09-17 → 2025-10-16 (+29d) | 2025-09-17 → 2025-10-16 (+29d) |  |  |
| 48 | **ABAC上海前滩办公室防火墙替换（现场）** | 2025-09-18 → 2025-10-17 (+29d) | 2025-09-20 → 2025-10-19 (+29d) |  |  |
| 49 | 设备配置+割接 | 2025-09-18 → 2025-10-17 (+29d) | 2025-09-18 → 2025-10-17 (+29d) |  |  |
| 50 | 网络保障 | 2025-09-19 → 2025-10-20 (+31d) | 2025-09-19 → 2025-10-20 (+31d) |  |  |
| 51 | 差旅 | 2025-09-20 → 2025-10-20 (+30d) | 2025-09-20 → 2025-10-20 (+30d) |  |  |
| 52 | **ABAC江苏贸易公司（新如东）防火墙替换（远程）** | 2025-09-22 → 2025-10-20 (+28d) | 2025-09-23 → 2025-10-21 (+28d) |  |  |
| 53 | 设备配置+割接 | 2025-09-22 → 2025-10-20 (+28d) | 2025-09-22 → 2025-10-20 (+28d) |  |  |
| 54 | 网络保障 | 2025-09-22 → 2025-10-21 (+29d) | 2025-09-22 → 2025-10-21 (+29d) |  |  |
| 55 | **ABAC如东工厂防火墙替换（远程）** | 2025-09-23 → 2025-10-22 (+29d) | 2025-09-24 → 2025-10-23 (+29d) |  |  |
| 56 | 设备配置+割接 | 2025-09-23 → 2025-10-22 (+29d) | 2025-09-23 → 2025-10-22 (+29d) |  |  |
| 57 | 网络保障 | 2025-09-24 → 2025-10-23 (+29d) | 2025-09-24 → 2025-10-23 (+29d) |  |  |
| 58 | **ABSC哈尔滨办公室防火墙替换（远程）** | 2025-09-25 → 2025-10-24 (+29d) | 2025-09-26 → 2025-10-25 (+29d) |  |  |
| 59 | 设备配置+割接 | 2025-09-25 → 2025-10-24 (+29d) | 2025-09-25 → 2025-10-24 (+29d) |  |  |
| 60 | 网络保障 | 2025-09-26 → 2025-10-27 (+31d) | 2025-09-26 → 2025-10-27 (+31d) |  |  |
| 61 | **ABMC烟台工厂防火墙替换（远程）** | 2025-09-27 → 2025-10-27 (+30d) | 2025-09-28 → 2025-10-28 (+30d) |  |  |
| 62 | 设备配置+割接 | 2025-09-27 → 2025-10-27 (+30d) | 2025-09-27 → 2025-10-27 (+30d) |  |  |
| 63 | 网络保障 | 2025-09-29 → 2025-10-27 (+28d) | 2025-09-29 → 2025-10-27 (+28d) |  |  |
| 64 | **ABAC江西工厂防火墙替换（现场）** | 2025-09-29 → 2025-10-28 (+29d) | 2025-10-01 → 2025-10-30 (+29d) |  |  |
| 65 | 差旅 | 2025-09-29 → 2025-10-28 (+29d) | 2025-09-29 → 2025-10-28 (+29d) |  |  |
| 66 | 设备配置+割接 | 2025-09-30 → 2025-10-29 (+29d) | 2025-09-30 → 2025-10-29 (+29d) |  |  |
| 67 | 网络保障 | 2025-10-01 → 2025-10-30 (+29d) | 2025-10-01 → 2025-10-30 (+29d) |  |  |
| 68 | **ABAC安徽工厂防火墙替换（现场）** | 2025-10-02 → 2025-10-31 (+29d) | 2025-10-04 → 2025-11-02 (+29d) |  |  |
| 69 | 差旅 | 2025-10-02 → 2025-10-31 (+29d) | 2025-10-02 → 2025-10-31 (+29d) |  |  |
| 70 | 设备配置+割接 | 2025-10-03 → 2025-11-03 (+31d) | 2025-10-03 → 2025-11-03 (+31d) |  |  |
| 71 | 网络保障 | 2025-10-04 → 2025-11-03 (+30d) | 2025-10-04 → 2025-11-03 (+30d) |  |  |
| 72 | **ABAC驻马店工厂防火墙替换（现场）** | 2025-10-06 → 2025-11-03 (+28d) | 2025-10-08 → 2025-11-05 (+28d) |  |  |
| 73 | 差旅 | 2025-10-06 → 2025-11-03 (+28d) | 2025-10-06 → 2025-11-03 (+28d) |  |  |
| 74 | 设备配置+割接 | 2025-10-06 → 2025-11-04 (+29d) | 2025-10-06 → 2025-11-04 (+29d) |  |  |
| 75 | 网络保障 | 2025-10-07 → 2025-11-05 (+29d) | 2025-10-07 → 2025-11-05 (+29d) |  |  |
| 76 | **ABAC新乡工厂防火墙替换（现场）** | 2025-10-08 → 2025-11-06 (+29d) | 2025-10-10 → 2025-11-08 (+29d) |  |  |
| 77 | 差旅 | 2025-10-08 → 2025-11-06 (+29d) | 2025-10-08 → 2025-11-06 (+29d) |  |  |
| 78 | 设备配置+割接 | 2025-10-09 → 2025-11-07 (+29d) | 2025-10-09 → 2025-11-07 (+29d) |  |  |
| 79 | 网络保障 | 2025-10-10 → 2025-11-10 (+31d) | 2025-10-10 → 2025-11-10 (+31d) |  |  |
| 80 | **ABAC陕西工厂防火墙替换（现场）** | 2025-10-11 → 2025-11-10 (+30d) | 2025-10-13 → 2025-11-12 (+30d) |  |  |
| 81 | 差旅 | 2025-10-11 → 2025-11-10 (+30d) | 2025-10-11 → 2025-11-10 (+30d) |  |  |
| 82 | 设备配置+割接 | 2025-10-13 → 2025-11-10 (+28d) | 2025-10-13 → 2025-11-10 (+28d) |  |  |
| 83 | 网络保障 | 2025-10-13 → 2025-11-11 (+29d) | 2025-10-13 → 2025-11-11 (+29d) |  |  |
| 84 | **ABAC天津工厂防火墙替换（现场）** | 2025-10-14 → 2025-11-12 (+29d) | 2025-10-17 → 2025-11-15 (+29d) |  |  |
| 85 | 差旅 | 2025-10-14 → 2025-11-12 (+29d) | 2025-10-14 → 2025-11-12 (+29d) |  |  |
| 86 | 设备配置+割接 | 2025-10-15 → 2025-11-13 (+29d) | 2025-10-15 → 2025-11-13 (+29d) |  |  |
| 87 | SDWAN优化动作 | 2025-10-16 → 2025-11-14 (+29d) | 2025-10-16 → 2025-11-14 (+29d) |  |  |
| 88 | 网络保障 | 2025-10-17 → 2025-11-17 (+31d) | 2025-10-17 → 2025-11-17 (+31d) |  |  |
| 89 | **ABAC鞍山工厂防火墙替换（现场）** | 2025-10-18 → 2025-11-17 (+30d) | 2025-10-21 → 2025-11-20 (+30d) |  |  |

| ID | Task | Start | Finish |
| --- | --- | --- | --- |
| 90 | 差旅 | 2025-10-18 → 2025-11-17 (+30d) | 2025-10-18 → 2025-11-17 (+30d) |
| 91 | 设备配置+割接 | 2025-10-20 → 2025-11-17 (+28d) | 2025-10-20 → 2025-11-17 (+28d) |
| 92 | SDWAN优化动作 | 2025-10-20 → 2025-11-18 (+29d) | 2025-10-20 → 2025-11-18 (+29d) |
| 93 | 网络保障 | 2025-10-21 → 2025-11-19 (+29d) | 2025-10-21 → 2025-11-19 (+29d) |
| 94 | **ABAC哈尔滨办公室防火墙替换（现场）** | 2025-10-22 → 2025-11-20 (+29d) | 2025-10-24 → 2025-11-22 (+29d) |
| 95 | 差旅 | 2025-10-22 → 2025-11-20 (+29d) | 2025-10-22 → 2025-11-20 (+29d) |
| 96 | 设备配置+割接 | 2025-10-23 → 2025-11-21 (+29d) | 2025-10-23 → 2025-11-21 (+29d) |
| 97 | 网络保障 | 2025-10-24 → 2025-11-24 (+31d) | 2025-10-24 → 2025-11-24 (+31d) |
| 98 | **ABAC哈尔滨工厂防火墙替换（现场）** | 2025-10-25 → 2025-11-24 (+30d) | 2025-10-28 → 2025-11-27 (+30d) |
| 99 | 差旅 | 2025-10-25 → 2025-11-24 (+30d) | 2025-10-25 → 2025-11-24 (+30d) |
| 100 | 设备配置+割接 | 2025-10-27 → 2025-11-24 (+28d) | 2025-10-27 → 2025-11-24 (+28d) |
| 101 | SDWAN优化动作 | 2025-10-27 → 2025-11-25 (+29d) | 2025-10-27 → 2025-11-25 (+29d) |
| 102 | 网络保障 | 2025-10-28 → 2025-11-26 (+29d) | 2025-10-28 → 2025-11-26 (+29d) |
| 103 | 项目交付阶段总结会 | 2025-10-29 → 2025-11-27 (+29d) | 2025-10-29 → 2025-11-27 (+29d) |
| 104 | **项目验收阶段** | 2025-10-30 → 2025-11-28 (+29d) | 2025-11-01 → 2025-11-30 (+29d) |
| 105 | 项目验收工作启动会 | 2025-10-30 → 2025-11-28 (+29d) | 2025-10-30 → 2025-11-28 (+29d) |
| 106 | 项目验收文档整理 | 2025-10-31 → 2025-12-01 (+31d) | 2025-10-31 → 2025-12-01 (+31d) |
| 107 | 项目验收 | 2025-11-01 → 2025-12-01 (+30d) | 2025-11-01 → 2025-12-01 (+30d) |
